# 时空项目节点

Schedule from GanttProject, 2013-10-18 to 2014-02-28.
wozlla
Holidays every year on 01-01, 03-24, 04-02, 05-01, 05-25, 07-09, 12-08, 12-25

## Calendars

- Project calendar: Mon-Sat working; Sun off.

## Resources

| Resource |
| --- |
| 张春生 |
| 周国栋 |
| 郭佳佳 |
| 孙奇 |

## Schedule

| ID | WBS | Task | Duration | Start | Finish | 执行者 |
| --- | --- | --- | --- | --- | --- | --- |
| 1 | 1 | **时空项目节点** | 32d | 2013-10-18 | 2013-11-23 |  |
| 2 | 1.1 | **策划工作** | 32d | 2013-10-18 | 2013-11-23 |  |
| 3 | 1.1.1 | 主界面文档 | 1d | 2013-10-26 | 2013-10-26 | 已完成 |
| 4 | 1.1.2 | 聊天文档 | 1d | 2013-10-26 | 2013-10-26 | 已完成 |
| 5 | 1.1.3 | 阵型文档 | 1d | 2013-10-26 | 2013-10-26 | 已完成 |
| 6 | 1.1.4 | 邮件文档 | 1d | 2013-10-22 | 2013-10-22 | 已完成 |
| 7 | 1.1.5 | 社交文档 | 1d | 2013-10-22 | 2013-10-22 | 已完成 |
| 8 | 1.1.6 | 商店界面 | 1d | 2013-10-18 | 2013-10-18 | 已完成 |
| 9 | 1.1.7 | 人物属性文档（包含成就） | 4d | 2013-10-26 | 2013-10-30 | 郭佳佳 |
| 10 | 1.1.8 | 装备及其强化 | 4d | 2013-10-31 | 2013-11-04 | 郭佳佳 |
| 11 | 1.1.9 | 武器及其强化 | 4d | 2013-10-31 | 2013-11-04 | 郭佳佳 |
| 12 | 1.1.10 | 背包物品 | 4d | 2013-11-05 | 2013-11-08 | 郭佳佳 |
| 13 | 1.1.11 | 技能 | 3d | 2013-11-09 | 2013-11-12 | 郭佳佳 |
| 14 | 1.1.12 | 宠物 | 4d | 2013-11-13 | 2013-11-16 | 郭佳佳 |
| 15 | 1.1.13 | 整合缓冲 | 3d | 2013-11-18 | 2013-11-20 | 郭佳佳 |
| 16 | 1.1.14 | 人物成长属性设定 | 1d | 2013-10-26 | 2013-10-26 | 孙奇 |
| 17 | 1.1.15 | 英雄定位设定 | 1d | 2013-10-28 | 2013-10-28 | 孙奇 |
| 18 | 1.1.16 | 英雄星级属性调整 | 2d | 2013-10-30 | 2013-10-31 | 孙奇 |
| 19 | 1.1.17 | 人物属性平衡调整 | 2d | 2013-11-01 | 2013-11-02 | 孙奇 |
| 20 | 1.1.18 | 怪物属性设定 | 2d | 2013-11-05 | 2013-11-06 | 孙奇 |
| 21 | 1.1.19 | 数值拆解 | 3d | 2013-11-07 | 2013-11-09 | 孙奇 |
| 22 | 1.1.20 | 数值调试 | 6d | 2013-11-11 | 2013-11-16 | 孙奇 |
| 23 | 1.1.21 | 体力相关设定 | 2d | 2013-11-18 | 2013-11-19 | 孙奇 |
| 24 | 1.1.22 | 经济其他来源设定 | 3d | 2013-11-20 | 2013-11-22 | 孙奇 |
| 25 | 1.1.23 | 整合缓冲 | 1d | 2013-11-23 | 2013-11-23 | 孙奇 |

| ID | WBS | Task | Duration | Start | Finish | 执行者 |
| --- | --- | --- | --- | --- | --- | --- |
| 26 | 2 | **UI工作** | 93d | 2013-10-28 | 2014-02-14 |  |
| 27 | 2.1 | 主界面 | 2d | 2013-10-28 | 2013-10-29 | manman |
| 28 | 2.2 | 聊天 | 2d | 2013-10-29 | 2013-10-30 | manman |
| 29 | 2.3 | 阵型 | 2d | 2013-10-29 | 2013-10-30 | manman |
| 30 | 2.4 | 邮件 | 2d | 2013-10-29 | 2013-10-30 | manman |
| 31 | 2.5 | 社交 | 2d | 2013-10-29 | 2013-10-30 | manman |
| 32 | 2.6 | 商店 | 2d | 2013-10-29 | 2013-10-30 | manman |
| 33 | 2.7 | 装备图标(一部分) | 14d | 2013-10-31 | 2013-11-15 | manman |
| 34 | 2.8 | 人物属性 | 4d | 2013-11-18 | 2013-11-21 | manman |
| 35 | 2.9 | 成就 | 2d | 2013-11-22 | 2013-11-23 | manman |
| 36 | 2.10 | 装备及其强化 | 4d | 2013-11-25 | 2013-11-28 | manman |
| 37 | 2.11 | 武器及其强化 | 4d | 2013-11-30 | 2013-12-04 | manman |
| 38 | 2.12 | 背包 | 3d | 2013-12-05 | 2013-12-07 | manman |
| 39 | 2.13 | 技能 | 3d | 2013-12-09 | 2013-12-11 | manman |
| 40 | 2.14 | 宠物 | 4d | 2013-12-13 | 2013-12-17 | manman |
| 41 | 2.15 | UI图标 | 10d | 2013-12-19 | 2013-12-31 | manman |
| 42 | 2.16 | 技能图标 | 17d | 2014-01-02 | 2014-01-21 | manman |
| 43 | 2.17 | 道具以及其他图标 | 29d | 2014-01-13 | 2014-02-14 | manman |
| 44 | 3 | **原画工作** | 103d | 2013-10-30 | 2014-02-28 |  |
| 45 | 3.1 | 1 | 103d | 2013-10-30 | 2014-02-28 | 王耀锐 |
| 46 | 3.2 | 3D | 102d | 2013-10-30 | 2014-02-27 | 雅芳 |
| 47 | 4 | **前端工作** | 65d | 2013-10-30 | 2014-01-15 |  |
| 48 | 4.1 | 主界面 | 3d | 2013-10-30 | 2013-11-01 |  |
| 49 | 4.2 | 聊天 | 4d | 2013-11-02 | 2013-11-06 |  |
| 50 | 4.3 | 邮件 | 4d | 2013-11-07 | 2013-11-11 |  |
| 51 | 4.4 | 社交 | 6d | 2013-11-12 | 2013-11-18 |  |
| 52 | 4.5 | 伙伴列表 | 3d | 2013-11-19 | 2013-11-21 |  |
| 53 | 4.6 | 人物装备 | 4d | 2013-11-22 | 2013-11-26 | manman |
| 54 | 4.7 | 背包 | 5d | 2013-11-27 | 2013-12-02 | manman |
| 55 | 4.8 | 商店 | 3d | 2013-12-03 | 2013-12-05 | manman |
| 56 | 4.9 | 强化 | 4d | 2013-12-06 | 2013-12-10 | manman |
| 57 | 4.10 | 技能 | 4d | 2013-12-11 | 2013-12-14 | manman |
| 58 | 4.11 | 成就 | 4d | 2013-12-16 | 2013-12-19 | manman |
| 59 | 4.12 | 阵型 | 6d | 2013-12-20 | 2013-12-27 | manman |
| 60 | 4.13 | 宠物 | 4d | 2013-12-30 | 2014-01-03 | manman |
| 61 | 4.14 | 人物属性 | 10d | 2014-01-04 | 2014-01-15 | manman |

| ID | WBS | Task | Duration | Start | Finish | Complete | 执行者 | 备注 |
| --- | --- | --- | --- | --- | --- | --- | --- | --- |
| 62 | 5 | **服务器工作** | 36d | 2013-10-21 | 2013-11-30 |  |  |  |
| 63 | 5.1 | **认证** | 1d | 2013-10-21 | 2013-10-21 | 1% |  |  |
| 64 | 5.1.1 | auth | 1d | 2013-10-21 | 2013-10-21 | 1% | 张春生 |  |
| 65 | 5.2 | **角色** | 2d | 2013-10-21 | 2013-10-22 | 1% |  |  |
| 66 | 5.2.1 | 创建角色 | 1d | 2013-10-21 | 2013-10-21 | 1% | 张春生 |  |
| 67 | 5.2.2 | 删除角色 | 1d | 2013-10-22 | 2013-10-22 | 1% | 张春生 |  |
| 68 | 5.3 | **场景** | 2d | 2013-10-23 | 2013-10-24 | 1% |  |  |
| 69 | 5.3.1 | 切换场景 | 2d | 2013-10-23 | 2013-10-24 | 1% | 张春生 |  |
| 70 | 5.4 | **竞技场** | 5d | 2013-10-24 | 2013-10-29 | 1% |  |  |
| 71 | 5.4.1 | 加入竞技场 | 5d | 2013-10-24 | 2013-10-29 | 1% | 张春生 | 拥有竞技场功能自动加入 |
| 72 | 5.4.2 | PK | 1d | 2013-10-24 | 2013-10-24 | 1% | 张春生 | 战斗调整 |
| 73 | 5.4.3 | 获得排名 | 2d | 2013-10-24 | 2013-10-25 | 1% | 周国栋 | 需要联调 |
| 74 | 5.5 | **赌场** | 2d | 2013-11-11 | 2013-11-12 | 1% |  |  |
| 75 | 5.5.1 | 下注 | 2d | 2013-11-11 | 2013-11-12 | 1% | 周国栋 | 需要联调 |
| 76 | 5.5.2 | 获得物品 | 2d | 2013-11-11 | 2013-11-12 | 1% | 周国栋 | 需要联调 |
| 77 | 5.6 | **武器装备** | 5d | 2013-11-04 | 2013-11-08 | 1% |  |  |
| 78 | 5.6.1 | 装载装备 | 5d | 2013-11-04 | 2013-11-08 | 1% | 张春生 | 需要联调 |
| 79 | 5.6.2 | 卸载装备 | 5d | 2013-11-04 | 2013-11-08 | 1% | 张春生 | 需要联调 |
| 80 | 5.6.3 | 升级装备 | 5d | 2013-11-04 | 2013-11-08 | 1% | 张春生 | 需要联调 |
| 81 | 5.7 | **阵型** | 5d | 2013-10-29 | 2013-11-02 | 1% |  |  |
| 82 | 5.7.1 | 更改阵型 | 5d | 2013-10-29 | 2013-11-02 | 1% | 张春生 |  |
| 83 | 5.8 | **好友** | 5d | 2013-11-04 | 2013-11-08 | 1% |  |  |
| 84 | 5.8.1 | 获得好友列表 | 5d | 2013-11-04 | 2013-11-08 | 1% | 周国栋 | 需要联调 |
| 85 | 5.8.2 | 添加好友 | 5d | 2013-11-04 | 2013-11-08 | 1% | 周国栋 | 需要联调 |
| 86 | 5.8.3 | 删除好友 | 5d | 2013-11-04 | 2013-11-08 | 1% | 周国栋 | 需要联调 |

Notes:
- 71: 拥有竞技场功能自动加入

| ID | WBS | Task | Duration | Start | Finish | Complete | 执行者 | 备注 |
| --- | --- | --- | --- | --- | --- | --- | --- | --- |
| 87 | 5.9 | **副本** | 5d | 2013-11-02 | 2013-11-07 | 1% |  |  |
| 88 | 5.9.1 | 触发副本事件 | 5d | 2013-11-02 | 2013-11-07 | 1% | 张春生 |  |
| 89 | 5.10 | 战斗 | 30d | 2013-10-26 | 2013-11-29 |  | 张春生 |  |
| 90 | 5.11 | **邮件** | 6d | 2013-11-01 | 2013-11-07 | 1% |  |  |
| 91 | 5.11.1 | 发邮件 | 5d | 2013-11-01 | 2013-11-06 | 1% | 周国栋 | 需要联调 |
| 92 | 5.11.2 | 查看邮件 | 5d | 2013-11-01 | 2013-11-06 | 1% | 周国栋 | 需要联调 |
| 93 | 5.11.3 | 删除邮件 | 6d | 2013-11-01 | 2013-11-07 | 1% | 周国栋 | 需要联调 |
| 94 | 5.11.4 | 获得物品 | 6d | 2013-11-01 | 2013-11-07 | 1% | 周国栋 | 需要联调 |
| 95 | 5.12 | **包裹** | 19d | 2013-10-30 | 2013-11-20 |  |  |  |
| 96 | 5.12.1 | 丢弃物品 | 5d | 2013-10-30 | 2013-11-04 | 1% | 周国栋 | 需要联调 |
| 97 | 5.12.2 | 卖出物品 | 5d | 2013-10-30 | 2013-11-04 | 1% | 周国栋 | 需要联调 |
| 98 | 5.12.3 | 重置背包 | 5d | 2013-10-30 | 2013-11-04 | 1% | 周国栋 | 需要联调 |
| 99 | 5.12.4 | 使用道具 | 10d | 2013-11-09 | 2013-11-20 |  | 周国栋 | 道具效果 |
| 100 | 5.13 | **商店** | 5d | 2013-10-29 | 2013-11-02 | 1% |  |  |
| 101 | 5.13.1 | 购买物品 | 5d | 2013-10-29 | 2013-11-02 | 1% | 周国栋 |  |
| 102 | 5.14 | **技能** | 5d | 2013-11-09 | 2013-11-14 | 1% |  |  |
| 103 | 5.14.1 | 学习技能 | 5d | 2013-11-09 | 2013-11-14 | 1% | 张春生 | 需要联调 |
| 104 | 5.14.2 | 升级技能 | 5d | 2013-11-09 | 2013-11-14 | 1% | 张春生 | 需要联调 |
| 105 | 5.14.3 | 使用技能 | 5d | 2013-11-09 | 2013-11-14 | 1% | 张春生 | 需要联调 |
| 106 | 5.15 | **任务** | 30d | 2013-10-28 | 2013-11-30 |  |  |  |
| 107 | 5.15.1 | 接任务 | 10d | 2013-10-28 | 2013-11-07 | 1% | 张春生 | 需要联调 |
| 108 | 5.15.2 | 交任务 | 10d | 2013-10-28 | 2013-11-07 | 1% | 张春生 | 需要联调 |
| 109 | 5.15.3 | 任务进度 | 30d | 2013-10-28 | 2013-11-30 |  | 张春生 | 任务进度处理 |
| 110 | 5.16 | **宠物** | 5d | 2013-11-18 | 2013-11-22 |  |  |  |
| 111 | 5.16.1 | 获得宠物 | 5d | 2013-11-18 | 2013-11-22 |  | 周国栋 |  |
| 112 | 5.16.2 | 宠物列表 | 5d | 2013-11-18 | 2013-11-22 |  | 周国栋 |  |
| 113 | 5.16.3 | 使用宠物 | 5d | 2013-11-18 | 2013-11-22 |  | 周国栋 |  |

| ID | WBS | Task | Duration | Start | Finish | Complete | 执行者 | 备注 |
| --- | --- | --- | --- | --- | --- | --- | --- | --- |
| 114 | 5.17 | **成就** | 5d | 2013-11-07 | 2013-11-12 |  |  |  |
| 115 | 5.17.1 | 获得成就 | 5d | 2013-11-07 | 2013-11-12 |  | 张春生 |  |
| 116 | 5.18 | **聊天** | 5d | 2013-10-26 | 2013-10-31 | 1% |  |  |
| 117 | 5.18.1 | 世界 | 5d | 2013-10-26 | 2013-10-31 | 1% | 张春生 | 需要联调 |
| 118 | 5.18.2 | 场景 | 5d | 2013-10-26 | 2013-10-31 | 1% | 张春生 | 需要联调 |
| 119 | 5.18.3 | 私聊 | 5d | 2013-10-26 | 2013-10-31 | 1% | 张春生 | 需要联调 |
| 120 | 5.19 | **GM命令** | 5d | 2013-10-26 | 2013-10-31 | 1% |  |  |
| 121 | 5.19.1 | 重置任务 | 5d | 2013-10-26 | 2013-10-31 | 1% | 张春生 | 需要联调 |
| 122 | 5.19.2 | 更新金币 | 5d | 2013-10-26 | 2013-10-31 | 1% | 张春生 | 需要联调 |
| 123 | 5.19.3 | 更新经验 | 5d | 2013-10-26 | 2013-10-31 | 1% | 张春生 | 需要联调 |
